# توسعه سامانه ارائه خدمات نئوبانک

Schedule from MS Project, 2022-03-26 to 2023-05-22, costs in تومان.

## Calendars

- Shamsi Calendar: Mon-Wed 09:00-13:00, 14:00-18:00; Thu 09:00-15:00; Fri off; Sat-Sun 09:00-13:00, 14:00-18:00. Exceptions (off unless hours are given): 2022-04-02 (روز طبیعت), 2022-04-23 (شهادت امام علی), 2022-05-03 to 2022-05-04 (عید فطر), 2022-06-04 to 2022-06-05 (رحلت امام خمینی و قیام 15 خرداد), 2022-07-10 (عید قربان), 2022-07-18 (عید غدیر), 2022-08-07 to 2022-08-08 (تاسوعا و عاشورا), 2022-09-17 (اربعین), 2022-09-25 (رحلت پیامبر), 2022-09-27 (شهادت امام رضا), 2022-10-05 (شهادت امام حسن), 2022-12-27 (شهادت فاطمه), 2023-02-04 (روز پدر), 2023-02-11 (پیروزی انقلاب), 2023-02-18 (مبعث پیامبر), 2023-03-08 (نیمه شعبان), 2023-03-20 (روز ملی شدن نفت), 2023-03-21 to 2023-03-23 (تعطیلات عید نوروز 1402), 2023-04-01 to 2023-04-02 (روز طبیعت و روز جمهوری اسلامی), 2023-04-13 (شهادت امام علی), 2023-04-22 to 2023-04-23 (عید فطر), 2023-05-16 (شهادت امام جعفر).

## Resources

| Resource | Group | Rate |
| --- | --- | --- |
| اعضای مدیریت پروژه | 1 | 48000 |
| متخصصین پشتیبانی | 2 | 25000 |
| مدیر دیجیتال مارکتینگ | 3 | 57000 |
| مسئول تولید محتوا | 4 | 33000 |
| مسئول سئو | 5 | 39000 |
| مسئول شبکه‌های اجتماعی | 6 | 24000 |
| مسئول تبلیغات دیجیتال | 7 | 40000 |
| Back-end توسعه‌دهنده | 8 | 55000 |
| Front-end توسعه‌دهنده | 9 | 55000 |
| تحلیلگر داده | 10 | 80000 |
| مهندس نرم‌افزار و زیرساخت | 11 | 45000 |
| توسعه‌دهنده پایگاه داده | 12 | 55000 |
| Client/server کارشناس | 13 | 65000 |
| کارشناس تست نرم‌افزار | 14 | 50000 |
| UI/UX کارشناس | 15 | 85000 |
| مدیر محصول | 16 | 110000 |
| مالک محصول | 17 | 130000 |
| کارشناس تحقیق و توسعه | 18 | 55000 |
| مشاور بانکی و حقوقی | 19 | 40000 |
| مسئول کسب مجوزها | 20 | 35000 |
| کارشناس امنیت سایبری | 21 | 65000 |
| تیم تدارکات | 22 | 30000 |
| بودجه | 23 |  |

## Schedule

| ID | WBS | Task | Type | Duration | Start | Finish | Predecessors | Total slack | Free slack | Constraint | Resources | Work | Cost | Text1 | Text2 |
| --- | --- | --- | --- | --- | --- | --- | --- | --- | --- | --- | --- | --- | --- | --- | --- |
| 1 | 1 | **برنامه‌ریزی** |  | 22d | 2022-03-26 | 2022-04-21 |  | 0d |  |  |  | 560h | 26,880,000 | 1401/01/06 | 1401/02/01 |
| 2 | 1.1 | **طراحی و برنامه‌ریزی پروژه** |  | 17d | 2022-03-26 | 2022-04-16 |  | 0d |  |  |  | 352h | 16,896,000 | 1401/01/06 | 1401/01/27 |
| 3 | 1.1.1 | تنظیم منشور پروژه |  | 5d | 2022-03-26 | 2022-03-30 |  | 0d |  | must start on 2022-03-26 | اعضای مدیریت پروژه [400%] | 160h | 7,680,000 | 1401/01/06 | 1401/01/10 |
| 4 | 1.1.2 | زمان‌سنجی فعالیت‌ها |  | 7d | 2022-03-31 | 2022-04-10 | 3 | 31.5d | 0d |  | اعضای مدیریت پروژه [200%] | 112h | 5,376,000 | 1401/01/11 | 1401/01/21 |
| 5 | 1.1.3 | زمان‌بندی فعالیت‌ها |  | 5d | 2022-04-10 | 2022-04-16 | 4 | 31.5d | 0d |  | اعضای مدیریت پروژه [200%] | 80h | 3,840,000 | 1401/01/21 | 1401/01/27 |
| 6 | 1.2 | **برنامه‌ریزی منابع** |  | 17d | 2022-03-31 | 2022-04-21 |  | 32.5d |  |  |  | 208h | 9,984,000 | 1401/01/11 | 1401/02/01 |
| 7 | 1.2.1 | برنامه‌ریزی بودجه |  | 8d | 2022-03-31 | 2022-04-11 | 3 | 41.5d | 10d |  | اعضای مدیریت پروژه [200%] | 128h | 6,144,000 | 1401/01/11 | 1401/01/22 |
| 8 | 1.2.2 | برنامه‌ریزی منابع انسانی |  | 5d | 2022-04-16 | 2022-04-21 | 7SS+2d, 5 | 31.5d |  |  | اعضای مدیریت پروژه [200%] | 80h | 3,840,000 | 1401/01/27 | 1401/02/01 |
| 9 | 2 | **فعالیت‌های حقوقی** |  | 122d | 2022-04-04 | 2022-09-10 |  | 9.5d |  |  |  | 4320h | 146,520,000 | 1401/01/15 | 1401/06/19 |
| 10 | 2.1 | **کسب مجوزهای بانکی** |  | 50d | 2022-06-12 | 2022-08-16 |  | 9.5d |  |  |  | 1680h | 57,600,000 | 1401/03/22 | 1401/05/25 |
| 11 | 2.1.1 | کسب مجوز فعالیت از بانک مرکزی |  | 30d | 2022-06-12 | 2022-07-20 | 14 | 9.5d | 0d |  | مسئول کسب مجوزها [200%]; مشاور بانکی و حقوقی; تیم تدارکات [200%] | 1200h | 40,800,000 | 1401/03/22 | 1401/04/29 |
| 12 | 2.1.2 | عضویت در شبکه شتاب و شاپرک |  | 20d | 2022-07-21 | 2022-08-16 | 11 | 9.5d | 0d |  | مسئول کسب مجوزها; مشاور بانکی و حقوقی; تیم تدارکات | 480h | 16,800,000 | 1401/04/30 | 1401/05/25 |
| 13 | 2.2 | **کسب مجوزهای تجاری** |  | 122d | 2022-04-04 | 2022-09-10 |  | 9.5d |  |  |  | 2640h | 88,920,000 | 1401/01/15 | 1401/06/19 |
| 14 | 2.2.1 | ثبت برند |  | 2mo | 2022-04-04 | 2022-06-12 | 3SS+7d | 9.5d | 0d | start no earlier than 2022-04-04 | مسئول کسب مجوزها [200%]; تیم تدارکات [200%]; مشاور بانکی و حقوقی | 2080h | 70,720,000 | 1401/01/15 | 1401/03/22 |
| 15 | 2.2.2 | کسب نماد اعتماد الکترونیکی |  | 15d | 2022-08-17 | 2022-09-04 | 12 | 9.5d | 0d | finish no later than 2022-09-22 | مسئول کسب مجوزها; تیم تدارکات | 240h | 7,800,000 | 1401/05/26 | 1401/06/13 |
| 16 | 2.2.3 | کسب مجوز کشوری کسب‌وکار مجازی |  | 20d | 2022-08-17 | 2022-09-10 | 15SS | 9.5d | 8.75d | finish no later than 2022-09-22 | مسئول کسب مجوزها; تیم تدارکات | 320h | 10,400,000 | 1401/05/26 | 1401/06/19 |
| 17 | 3 | اخذ مجوزهای قانونی | milestone | 0d | 2022-09-22 | 2022-09-22 | 16, 15 | 181.75d |  | start no earlier than 2022-09-22 |  |  |  | 1401/06/31 | 1401/06/31 |
| 18 | 4 | **راه‌اندازی پلتفرم** |  | 235.25d | 2022-06-06 | 2023-04-10 |  | 0d |  |  |  | 22358h | 1,333,576,000 | 1401/03/16 | 1402/01/21 |
| 19 | 4.1 | **طراحی وب‌سایت** |  | 85d | 2022-06-06 | 2022-09-22 |  | 0d |  |  |  | 3328h | 183,040,000 | 1401/03/16 | 1401/06/31 |
| 20 | 4.1.1 | Back-end طراحی |  | 1.5mo | 2022-06-06 | 2022-07-25 | 8 | 0d |  | must start on 2022-06-06 | Back-end توسعه‌دهنده [400%] | 1248h | 68,640,000 | 1401/03/16 | 1401/05/03 |
| 21 | 4.1.2 | طراحی گرافیکی وب‌سایت |  | 2.5mo | 2022-06-29 | 2022-09-22 | 20SS+20d | 129.5d | 112.25d |  | Front-end توسعه‌دهنده [400%] | 2080h | 114,400,000 | 1401/04/08 | 1401/06/31 |
| 22 | 4.2 | **طراحی نرم‌افزار** |  | 143d | 2022-06-06 | 2022-12-06 |  | 17.5d |  |  |  | 11144h | 776,840,000 | 1401/03/16 | 1401/09/15 |
| 23 | 4.2.1 | تحقیق و توسعه |  | 3mo | 2022-06-06 | 2022-09-13 | 20SS | 17.5d | 0d |  | مدیر محصول; کارشناس تحقیق و توسعه [200%]; مالک محصول; تحلیلگر داده [200%] | 3744h | 318,240,000 | 1401/03/16 | 1401/06/22 |
| 24 | 4.2.2 | طراحی پایگاه داده |  | 40d | 2022-07-25 | 2022-09-14 | 20 | 113.5d | 0d |  | Back-end توسعه‌دهنده [200%]; توسعه‌دهنده پایگاه داده [400%]; Client/server کارشناس [200%] | 2560h | 147,200,000 | 1401/05/03 | 1401/06/23 |
| 25 | 4.2.3 | API طراحی |  | 50d | 2022-07-25 | 2022-10-01 | 24SS | 177d |  |  | مهندس نرم‌افزار و زیرساخت [300%] | 1200h | 54,000,000 | 1401/05/03 | 1401/07/09 |
| 26 | 4.2.4 | UI/UX & GUI طراحی |  | 2.5mo | 2022-09-13 | 2022-12-06 | 23 | 17.5d | 0d |  | UI/UX کارشناس [200%]; مسئول سئو [200%]; مدیر دیجیتال مارکتینگ; مدیر محصول; تحلیلگر داده | 3640h | 257,400,000 | 1401/06/22 | 1401/09/15 |

| ID | WBS | Task | Type | Duration | Start | Finish | Predecessors | Total slack | Free slack | Constraint | Resources | Work | Cost | Text1 | Text2 |
| --- | --- | --- | --- | --- | --- | --- | --- | --- | --- | --- | --- | --- | --- | --- | --- |
| 27 | 4.3 | **امنیت** |  | 37d | 2022-09-14 | 2022-11-03 |  | 113.5d |  |  |  | 1072h | 57,560,000 | 1401/06/23 | 1401/08/12 |
| 28 | 4.3.1 | طراحی سیستم ارسال رمز پویا |  | 15d | 2022-09-14 | 2022-10-08 | 12, 24 | 118.5d | 5d |  | کارشناس امنیت سایبری; مهندس نرم‌افزار و زیرساخت | 240h | 13,200,000 | 1401/06/23 | 1401/07/16 |
| 29 | 4.3.2 | Two factor authentication طراحی پروتکل |  | 10d | 2022-09-14 | 2022-10-01 | 24 | 123.5d | 10d |  | کارشناس امنیت سایبری; مهندس نرم‌افزار و زیرساخت | 160h | 8,800,000 | 1401/06/23 | 1401/07/09 |
| 30 | 4.3.3 | طراحی سیستم احراز هویت |  | 20d | 2022-09-14 | 2022-10-13 | 24 | 113.5d | 0d |  | مهندس نرم‌افزار و زیرساخت; کارشناس امنیت سایبری | 320h | 17,600,000 | 1401/06/23 | 1401/07/21 |
| 31 | 4.3.4 | پیاده‌سازی استانداردهای امنیتی بانک مرکزی |  | 7d | 2022-10-13 | 2022-10-22 | 11, 28, 29, 30 | 113.5d | 0d |  | مشاور بانکی و حقوقی; مهندس نرم‌افزار و زیرساخت | 112h | 4,760,000 | 1401/07/21 | 1401/07/30 |
| 32 | 4.3.5 | تست امنیت |  | 10d | 2022-10-23 | 2022-11-03 | 31 | 113.5d | 96.25d |  | کارشناس امنیت سایبری; کارشناس تست نرم‌افزار [200%] | 240h | 13,200,000 | 1401/08/01 | 1401/08/12 |
| 33 | 4.4 | **تست نرم‌افزار** |  | 28d | 2022-12-06 | 2023-01-10 |  | 17.5d |  |  |  | 896h | 76,160,000 | 1401/09/15 | 1401/10/20 |
| 34 | 4.4.1 | Unit Testing |  | 7d | 2022-12-06 | 2022-12-14 | 26 | 17.5d | 0d |  | کارشناس تست نرم‌افزار [200%]; مدیر محصول; مالک محصول | 224h | 19,040,000 | 1401/09/15 | 1401/09/23 |
| 35 | 4.4.2 | تست یکپارچگی |  | 7d | 2022-12-14 | 2022-12-24 | 34 | 17.5d | 0d |  | کارشناس تست نرم‌افزار [200%]; مدیر محصول; مالک محصول | 224h | 19,040,000 | 1401/09/23 | 1401/10/03 |
| 36 | 4.4.3 | System Testing |  | 7d | 2022-12-24 | 2023-01-02 | 35 | 17.5d | 0d |  | کارشناس تست نرم‌افزار [200%]; مدیر محصول; مالک محصول | 224h | 19,040,000 | 1401/10/03 | 1401/10/12 |
| 37 | 4.4.4 | (UAT) آزمون پذیرش کاربر |  | 7d | 2023-01-02 | 2023-01-10 | 36 | 17.5d | 0d |  | کارشناس تست نرم‌افزار [200%]; مدیر محصول; مالک محصول | 224h | 19,040,000 | 1401/10/12 | 1401/10/20 |
| 38 | 4.5 | **یکپارچه‌سازی نرم‌افزار و وب‌سایت** |  | 41.25d | 2023-01-10 | 2023-03-05 |  | 17.25d |  |  |  | 2864h | 148,980,000 | 1401/10/20 | 1401/12/14 |
| 39 | 4.5.1 | پیاده‌سازی هویت بصری یکپارچه و مشخص‌شده |  | 1mo | 2023-01-10 | 2023-02-13 | 37 | 17.5d | 0.25d |  | مدیر دیجیتال مارکتینگ; مسئول سئو [200%]; مسئول تولید محتوا [200%]; مسئول تبلیغات دیجیتال; UI/UX کارشناس [200%] | 1664h | 82,980,000 | 1401/10/20 | 1401/11/24 |
| 40 | 4.5.2 | اتصال نرم‌افزار و وب‌سایت به پایگاه داده |  | 15d | 2023-02-14 | 2023-03-05 | 21, 26, 24, 39 | 17.25d | 0d | finish no earlier than 2023-03-05 | مهندس نرم‌افزار و زیرساخت [200%]; Client/server کارشناس [200%]; Back-end توسعه‌دهنده [200%]; توسعه‌دهنده پایگاه داده [400%] | 1200h | 66,000,000 | 1401/11/25 | 1401/12/14 |
| 41 | 4.6 | **اجرا** |  | 23d | 2023-03-06 | 2023-04-10 |  | 17.25d |  |  |  | 3054h | 90,996,000 | 1401/12/15 | 1402/01/21 |
| 42 | 4.6.1 | برگزاری جلسه با کادر اجرایی پروژه | milestone | 0d | 2023-03-06 | 2023-03-06 |  | 17.25d | 0d | start no earlier than 2023-03-06 |  |  |  | 1401/12/15 | 1401/12/15 |
| 43 | 4.6.2 | اجرای اولیه در بازارهای خرد |  | 10d | 2023-03-06 | 2023-03-19 | 40, 32, 16, 15, 42 | 17.25d | 0d |  | تیم تدارکات [1000%]; متخصصین پشتیبانی [400%]; اعضای مدیریت پروژه [200%]; مسئول شبکه‌های اجتماعی; مسئول تولید محتوا | 1400h | 43,040,000 | 1401/12/15 | 1401/12/28 |
| 44 | 4.6.3 | اجرای ثانویه در بازار اصلی |  | 13d | 2023-03-19 | 2023-04-10 | 43 | 17.25d |  | finish no later than 2023-05-05 | تیم تدارکات [1000%]; متخصصین پشتیبانی [400%]; مسئول شبکه‌های اجتماعی; مسئول تبلیغات دیجیتال | 1654h | 47,956,000 | 1401/12/28 | 1402/01/21 |
| 45 | 5 | پایان فاز راه­اندازی و اجرای پلتفرم | milestone | 0d | 2023-05-06 | 2023-05-06 | 44 | 13.5d | 0d | start no earlier than 2023-05-06 |  |  |  | 1402/02/16 | 1402/02/16 |
| 46 | 6 | تهیه گزارشات مالی پروژه | milestone | 0d | 2023-05-06 | 2023-05-06 | 45 | 13.5d |  | start no earlier than 2023-03-11 |  |  |  | 1402/02/16 | 1402/02/16 |
| 47 | 7 | **بازاریابی** |  | 35d | 2023-03-25 | 2023-05-11 |  | 3.25d |  |  |  | 2440h | 128,600,000 | 1402/01/05 | 1402/02/21 |
| 48 | 7.1 | **تحقیقات بازار** |  | 20d | 2023-03-25 | 2023-04-20 |  | 3.25d |  |  |  | 880h | 74,720,000 | 1402/01/05 | 1402/01/31 |
| 49 | 7.1.1 | تحلیل رقبا |  | 10d | 2023-03-25 | 2023-04-08 | 23SS | 3.25d | 0d | start no earlier than 2023-03-25 | تحلیلگر داده [200%]; مدیر محصول; مالک محصول; کارشناس تحقیق و توسعه | 400h | 36,400,000 | 1402/01/05 | 1402/01/19 |
| 50 | 7.1.2 | بررسی مشتریان هدف |  | 10d | 2023-04-08 | 2023-04-20 | 49 | 3.25d | 0d |  | تحلیلگر داده [200%]; مالک محصول; مدیر محصول; کارشناس تحقیق و توسعه; مسئول شبکه‌های اجتماعی | 480h | 38,320,000 | 1402/01/19 | 1402/01/31 |

| ID | WBS | Task | Duration | Start | Finish | Predecessors | Total slack | Free slack | Constraint | Resources | Work | Cost | Text1 | Text2 |
| --- | --- | --- | --- | --- | --- | --- | --- | --- | --- | --- | --- | --- | --- | --- |
| 51 | 7.2 | **تبلیغات** | 15d | 2023-04-20 | 2023-05-11 |  | 3.25d |  |  |  | 1560h | 53,880,000 | 1402/01/31 | 1402/02/21 |
| 52 | 7.2.1 | تبلیغات مجازی | 15d | 2023-04-20 | 2023-05-11 | 50, 7 | 3.25d | 0d |  | مدیر دیجیتال مارکتینگ; مسئول شبکه‌های اجتماعی [200%]; مسئول تبلیغات دیجیتال [200%]; مسئول سئو [200%]; مسئول تولید محتوا [200%] | 1080h | 39,480,000 | 1402/01/31 | 1402/02/21 |
| 53 | 7.2.2 | تبلیغات محیطی | 15d | 2023-04-20 | 2023-05-11 | 52SS | 3.25d |  |  | تیم تدارکات [400%] | 480h | 14,400,000 | 1402/01/31 | 1402/02/21 |
| 54 | 8 | **خاتمه پروژه** | 5d | 2023-05-15 | 2023-05-22 |  | 0d |  |  |  | 320h | 21,160,000 | 1402/02/25 | 1402/03/01 |
| 55 | 8.1 | جمع‌بندی و جمع‌آوری گزارشات | 5d | 2023-05-15 | 2023-05-22 | 53, 44, 52 | 0d |  | must finish on 2023-05-22 | اعضای مدیریت پروژه [400%]; مدیر محصول; مالک محصول; مدیر دیجیتال مارکتینگ; مشاور بانکی و حقوقی | 320h | 21,160,000 | 1402/02/25 | 1402/03/01 |
