# توسعه سامانه ارائه خدمات نئوبانک

Schedule from MS Project, 2022-03-26 to 2023-05-22, status date 2022-11-26, costs in تومان, A marks actual dates.

## Calendars

- Shamsi Calendar: Mon-Wed 09:00-13:00, 14:00-18:00; Thu 09:00-15:00; Fri off; Sat-Sun 09:00-13:00, 14:00-18:00. Exceptions (off unless hours are given): 2022-04-02 (روز طبیعت), 2022-04-23 (شهادت امام علی), 2022-05-03 to 2022-05-04 (عید فطر), 2022-06-04 to 2022-06-05 (رحلت امام خمینی و قیام 15 خرداد), 2022-07-10 (عید قربان), 2022-07-18 (عید غدیر), 2022-08-07 to 2022-08-08 (تاسوعا و عاشورا), 2022-09-17 (اربعین), 2022-09-25 (رحلت پیامبر), 2022-09-27 (شهادت امام رضا), 2022-10-05 (شهادت امام حسن), 2022-12-27 (شهادت فاطمه), 2023-02-04 (روز پدر), 2023-02-11 (پیروزی انقلاب), 2023-02-18 (مبعث پیامبر), 2023-03-08 (نیمه شعبان), 2023-03-20 (روز ملی شدن نفت), 2023-03-21 to 2023-03-23 (تعطیلات عید نوروز 1402), 2023-04-01 to 2023-04-02 (روز طبیعت و روز جمهوری اسلامی), 2023-04-13 (شهادت امام علی), 2023-04-22 to 2023-04-23 (عید فطر), 2023-05-16 (شهادت امام جعفر).

## Resources

| Resource | Group | Rate |
| --- | --- | --- |
| اعضای مدیریت پروژه | 1 | 48000 |
| متخصصین پشتیبانی | 2 | 25000 |
| مدیر دیجیتال مارکتینگ | 3 | 57000 |
| مسئول تولید محتوا | 4 | 33000 |
| مسئول سئو | 5 | 39000 |
| مسئول شبکه‌های اجتماعی | 6 | 24000 |
| مسئول تبلیغات دیجیتال | 7 | 40000 |
| Back-end توسعه‌دهنده | 8 | 55000 |
| Front-end توسعه‌دهنده | 9 | 55000 |
| تحلیلگر داده | 10 | 80000 |
| مهندس نرم‌افزار و زیرساخت | 11 | 45000 |
| توسعه‌دهنده پایگاه داده | 12 | 55000 |
| Client/server کارشناس | 13 | 65000 |
| کارشناس تست نرم‌افزار | 14 | 50000 |
| UI/UX کارشناس | 15 | 85000 |
| مدیر محصول | 16 | 110000 |
| مالک محصول | 17 | 130000 |
| کارشناس تحقیق و توسعه | 18 | 55000 |
| مشاور بانکی و حقوقی | 19 | 40000 |
| مسئول کسب مجوزها | 20 | 35000 |
| کارشناس امنیت سایبری | 21 | 65000 |
| تیم تدارکات | 22 | 30000 |
| بودجه | 23 |  |

## Schedule

| ID | WBS | Task | Type | Duration | Start | Finish | Predecessors | Complete | Remaining | Baseline start | Baseline finish | Baseline duration | Total slack | Free slack | Constraint | Resources | Work | Actual work | Cost | Baseline cost | Actual cost | Text1 | Text2 |
| --- | --- | --- | --- | --- | --- | --- | --- | --- | --- | --- | --- | --- | --- | --- | --- | --- | --- | --- | --- | --- | --- | --- | --- |
| 1 | 1 | **برنامه‌ریزی** |  | 28.25d | 2022-03-26 A | 2022-05-01 A |  | 100% |  | 2022-03-26 | 2022-04-25 | 24d |  |  |  |  | 640h | 640h | 30,720,000 | 26,880,000 | 30,720,000 | 1401/01/06 | 1401/02/11 |
| 2 | 1.1 | **طراحی و برنامه‌ریزی پروژه** |  | 18.25d | 2022-03-26 A | 2022-04-17 A |  | 100% |  | 2022-03-26 | 2022-04-17 | 18.25d |  |  |  |  | 400h | 400h | 19,200,000 | 16,896,000 | 19,200,000 | 1401/01/06 | 1401/01/28 |
| 3 | 1.1.1 | تنظیم منشور پروژه |  | 5d | 2022-03-26 A | 2022-03-30 A |  | 100% |  | 2022-03-26 | 2022-03-30 | 5d |  |  | must start on 2022-03-26 | اعضای مدیریت پروژه [400%] | 160h | 160h | 7,680,000 | 7,680,000 | 7,680,000 | 1401/01/06 | 1401/01/10 |
| 4 | 1.1.2 | زمان‌سنجی فعالیت‌ها |  | 10d | 2022-03-31 A | 2022-04-13 A | 3 | 100% |  | 2022-03-31 | 2022-04-10 | 7d |  |  |  | اعضای مدیریت پروژه [200%] | 160h | 160h | 7,680,000 | 5,376,000 | 7,680,000 | 1401/01/11 | 1401/01/24 |
| 5 | 1.1.3 | زمان‌بندی فعالیت‌ها |  | 5d | 2022-04-11 A | 2022-04-17 A | 4 | 100% |  | 2022-04-11 | 2022-04-17 | 5d |  |  | must finish on 2022-04-17 | اعضای مدیریت پروژه [200%] | 80h | 80h | 3,840,000 | 3,840,000 | 3,840,000 | 1401/01/22 | 1401/01/28 |
| 6 | 1.2 | **برنامه‌ریزی منابع** |  | 23.25d | 2022-03-31 A | 2022-05-01 A |  | 100% |  | 2022-03-31 | 2022-04-25 | 19d |  |  |  |  | 240h | 240h | 11,520,000 | 9,984,000 | 11,520,000 | 1401/01/11 | 1401/02/11 |
| 7 | 1.2.1 | برنامه‌ریزی بودجه |  | 8d | 2022-03-31 A | 2022-04-11 A | 3 | 100% |  | 2022-03-31 | 2022-04-11 | 8d |  |  |  | اعضای مدیریت پروژه [200%] | 128h | 128h | 6,144,000 | 6,144,000 | 6,144,000 | 1401/01/11 | 1401/01/22 |
| 8 | 1.2.2 | برنامه‌ریزی منابع انسانی |  | 7d | 2022-04-21 A | 2022-05-01 A | 7SS+2d, 5 | 100% |  | 2022-04-18 | 2022-04-25 | 5d |  |  |  | اعضای مدیریت پروژه [200%] | 112h | 112h | 5,376,000 | 3,840,000 | 5,376,000 | 1401/02/01 | 1401/02/11 |
| 9 | 2 | **فعالیت‌های حقوقی** |  | 131.5d | 2022-04-04 A | 2022-09-22 A |  | 100% |  | 2022-04-04 | 2022-09-10 | 122d |  |  |  |  | 5240h | 5240h | 177,800,000 | 146,520,000 | 177,800,000 | 1401/01/15 | 1401/06/31 |
| 10 | 2.1 | **کسب مجوزهای بانکی** |  | 55d | 2022-07-08 A | 2022-09-19 A |  | 100% |  | 2022-06-12 | 2022-08-16 | 50d |  |  |  |  | 1880h | 1880h | 64,400,000 | 57,600,000 | 64,400,000 | 1401/04/17 | 1401/06/28 |
| 11 | 2.1.1 | کسب مجوز فعالیت از بانک مرکزی |  | 35d | 2022-07-08 A | 2022-08-24 A | 14 | 100% |  | 2022-06-12 | 2022-07-20 | 30d |  |  |  | مسئول کسب مجوزها [200%]; مشاور بانکی و حقوقی; تیم تدارکات [200%] | 1400h | 1400h | 47,600,000 | 40,800,000 | 47,600,000 | 1401/04/17 | 1401/06/02 |
| 12 | 2.1.2 | عضویت در شبکه شتاب و شاپرک |  | 20d | 2022-08-24 A | 2022-09-19 A | 11 | 100% |  | 2022-07-21 | 2022-08-16 | 20d |  |  |  | مسئول کسب مجوزها; مشاور بانکی و حقوقی; تیم تدارکات | 480h | 480h | 16,800,000 | 16,800,000 | 16,800,000 | 1401/06/02 | 1401/06/28 |
| 13 | 2.2 | **کسب مجوزهای تجاری** |  | 131.5d | 2022-04-04 A | 2022-09-22 A |  | 100% |  | 2022-04-04 | 2022-09-10 | 122d |  |  |  |  | 3360h | 3360h | 113,400,000 | 88,920,000 | 113,400,000 | 1401/01/15 | 1401/06/31 |
| 14 | 2.2.1 | ثبت برند |  | 70d | 2022-04-04 A | 2022-07-04 A | 3SS+7d | 100% |  | 2022-04-04 | 2022-06-12 | 2mo |  |  | start no earlier than 2022-04-04 | مسئول کسب مجوزها [200%]; تیم تدارکات [200%]; مشاور بانکی و حقوقی | 2800h | 2800h | 95,200,000 | 70,720,000 | 95,200,000 | 1401/01/15 | 1401/04/13 |
| 15 | 2.2.2 | کسب نماد اعتماد الکترونیکی |  | 15d | 2022-09-04 A | 2022-09-22 A | 12 | 100% |  | 2022-08-17 | 2022-09-04 | 15d |  |  | finish no later than 2022-09-22 | مسئول کسب مجوزها; تیم تدارکات | 240h | 240h | 7,800,000 | 7,800,000 | 7,800,000 | 1401/06/13 | 1401/06/31 |
| 16 | 2.2.3 | کسب مجوز کشوری کسب‌وکار مجازی |  | 20d | 2022-08-29 A | 2022-09-22 A | 15SS | 100% |  | 2022-08-17 | 2022-09-10 | 20d |  |  | finish no later than 2022-09-22 | مسئول کسب مجوزها; تیم تدارکات | 320h | 320h | 10,400,000 | 10,400,000 | 10,400,000 | 1401/06/07 | 1401/06/31 |
| 17 | 3 | اخذ مجوزهای قانونی | milestone | 0d | 2022-09-22 A | 2022-09-22 A | 16, 15 | 100% |  | 2022-09-22 | 2022-09-22 | 0d |  |  | start no earlier than 2022-09-22 |  |  |  |  |  |  | 1401/06/31 | 1401/06/31 |
| 18 | 4 | **راه‌اندازی پلتفرم** |  | 236.25d | 2022-06-06 A | 2023-04-11 |  | 77% | 53.35d | 2022-06-06 | 2023-04-11 | 236.25d | 0d |  |  |  | 24470h | 16064h | 1,462,936,000 | 1,333,576,000 | 1,037,900,000 | 1401/03/16 | 1402/01/22 |
| 19 | 4.1 | **طراحی وب‌سایت** |  | 101d | 2022-06-06 A | 2022-10-16 A |  | 100% |  | 2022-06-06 | 2022-09-22 | 85d |  |  |  |  | 3808h | 3808h | 209,440,000 | 183,040,000 | 209,440,000 | 1401/03/16 | 1401/07/24 |
| 20 | 4.1.1 | Back-end طراحی |  | 1.5mo | 2022-06-06 A | 2022-07-25 A | 8 | 100% |  | 2022-06-06 | 2022-07-25 | 1.5mo |  |  | must start on 2022-06-06 | Back-end توسعه‌دهنده [400%] | 1248h | 1248h | 68,640,000 | 68,640,000 | 68,640,000 | 1401/03/16 | 1401/05/03 |
| 21 | 4.1.2 | طراحی گرافیکی وب‌سایت |  | 80d | 2022-07-01 A | 2022-10-16 A | 20SS+20d | 100% |  | 2022-06-29 | 2022-09-22 | 2.5mo |  |  |  | Front-end توسعه‌دهنده [400%] | 2560h | 2560h | 140,800,000 | 114,400,000 | 140,800,000 | 1401/04/10 | 1401/07/24 |
| 22 | 4.2 | **طراحی نرم‌افزار** |  | 158d | 2022-06-06 A | 2022-12-25 |  | 90% | 15.45d | 2022-06-06 | 2022-12-06 | 143d | 0d |  |  |  | 11984h | 10626h | 836,240,000 | 776,840,000 | 740,210,000 | 1401/03/16 | 1401/10/04 |
| 23 | 4.2.1 | تحقیق و توسعه |  | 3mo | 2022-06-06 A | 2022-09-13 A | 20SS | 100% |  | 2022-06-06 | 2022-09-13 | 3mo |  |  |  | مدیر محصول; کارشناس تحقیق و توسعه [200%]; مالک محصول; تحلیلگر داده [200%] | 3744h | 3744h | 318,240,000 | 318,240,000 | 318,240,000 | 1401/03/16 | 1401/06/22 |
| 24 | 4.2.2 | طراحی پایگاه داده |  | 40d | 2022-07-26 A | 2022-09-14 A | 20 | 100% |  | 2022-07-26 | 2022-09-14 | 40d |  |  | must finish on 2022-09-14 | Back-end توسعه‌دهنده [200%]; توسعه‌دهنده پایگاه داده [400%]; Client/server کارشناس [200%] | 2560h | 2560h | 147,200,000 | 147,200,000 | 147,200,000 | 1401/05/04 | 1401/06/23 |
| 25 | 4.2.3 | API طراحی |  | 50d | 2022-07-26 A | 2022-10-19 A | 24SS | 100% |  | 2022-07-26 | 2022-10-19 | 50d |  |  |  | مهندس نرم‌افزار و زیرساخت [300%] | 1200h | 1200h | 54,000,000 | 54,000,000 | 54,000,000 | 1401/05/04 | 1401/07/27 |
| 26 | 4.2.4 | UI/UX & GUI طراحی |  | 80d | 2022-09-13 A | 2022-12-25 | 23 | 70% | 24.25d | 2022-09-13 | 2022-12-06 | 2.5mo | -14.25d | 0d |  | UI/UX کارشناس [200%]; مسئول سئو [200%]; مدیر دیجیتال مارکتینگ; مدیر محصول; تحلیلگر داده | 4480h | 3122h | 316,800,000 | 257,400,000 | 220,770,000 | 1401/06/22 | 1401/10/04 |

| ID | WBS | Task | Type | Duration | Start | Finish | Predecessors | Complete | Remaining | Baseline start | Baseline finish | Baseline duration | Total slack | Free slack | Constraint | Resources | Work | Actual work | Cost | Baseline cost | Actual cost | Text1 | Text2 |
| --- | --- | --- | --- | --- | --- | --- | --- | --- | --- | --- | --- | --- | --- | --- | --- | --- | --- | --- | --- | --- | --- | --- | --- |
| 27 | 4.3 | **امنیت** |  | 64d | 2022-09-15 A | 2022-12-06 |  | 90% | 6.3d | 2022-09-15 | 2022-11-06 | 39d | 69.25d |  |  |  | 1864h | 1630h | 101,120,000 | 57,560,000 | 88,250,000 | 1401/06/24 | 1401/09/15 |
| 28 | 4.3.1 | طراحی سیستم ارسال رمز پویا |  | 15d | 2022-09-19 A | 2022-10-11 A | 12, 24 | 100% |  | 2022-09-15 | 2022-10-08 | 15d |  |  |  | کارشناس امنیت سایبری; مهندس نرم‌افزار و زیرساخت | 240h | 240h | 13,200,000 | 13,200,000 | 13,200,000 | 1401/06/28 | 1401/07/19 |
| 29 | 4.3.2 | Two factor authentication طراحی پروتکل |  | 15d | 2022-09-15 A | 2022-10-08 A | 24 | 100% |  | 2022-09-15 | 2022-10-01 | 10d |  |  |  | کارشناس امنیت سایبری; مهندس نرم‌افزار و زیرساخت | 240h | 240h | 13,200,000 | 8,800,000 | 13,200,000 | 1401/06/24 | 1401/07/16 |
| 30 | 4.3.3 | طراحی سیستم احراز هویت |  | 27d | 2022-09-18 A | 2022-10-24 A | 24 | 100% |  | 2022-09-18 | 2022-10-15 | 20d |  |  |  | مهندس نرم‌افزار و زیرساخت; کارشناس امنیت سایبری | 432h | 432h | 23,760,000 | 17,600,000 | 23,760,000 | 1401/06/27 | 1401/08/02 |
| 31 | 4.3.4 | پیاده‌سازی استانداردهای امنیتی بانک مرکزی |  | 7d | 2022-10-16 A | 2022-10-24 A | 11, 28, 29, 30 | 100% |  | 2022-10-16 | 2022-10-24 | 7d |  |  | must finish on 2022-10-24 | مشاور بانکی و حقوقی; مهندس نرم‌افزار و زیرساخت | 112h | 112h | 4,760,000 | 4,760,000 | 4,760,000 | 1401/07/24 | 1401/08/02 |
| 32 | 4.3.5 | تست امنیت |  | 35d | 2022-10-25 A | 2022-12-06 | 31 | 72% | 9.75d | 2022-10-25 | 2022-11-06 | 10d | 69.25d |  |  | کارشناس امنیت سایبری; کارشناس تست نرم‌افزار [200%] | 840h | 606h | 46,200,000 | 13,200,000 | 33,330,000 | 1401/08/03 | 1401/09/15 |
| 33 | 4.4 | **تست نرم‌افزار** |  | 28d | 2022-12-25 | 2023-01-29 |  |  |  | 2022-12-06 | 2023-01-10 | 28d | -14.25d | 0d |  |  | 896h |  | 76,160,000 | 76,160,000 |  | 1401/10/04 | 1401/11/09 |
| 34 | 4.4.1 | Unit Testing |  | 7d | 2022-12-25 | 2023-01-03 | 26 |  |  | 2022-12-06 | 2022-12-14 | 7d | -14.25d | 0d |  | کارشناس تست نرم‌افزار [200%]; مدیر محصول; مالک محصول | 224h |  | 19,040,000 | 19,040,000 |  | 1401/10/04 | 1401/10/13 |
| 35 | 4.4.2 | تست یکپارچگی |  | 7d | 2023-01-03 | 2023-01-11 | 34 |  |  | 2022-12-14 | 2022-12-24 | 7d | -14.25d | 0d |  | کارشناس تست نرم‌افزار [200%]; مدیر محصول; مالک محصول | 224h |  | 19,040,000 | 19,040,000 |  | 1401/10/13 | 1401/10/21 |
| 36 | 4.4.3 | System Testing |  | 7d | 2023-01-11 | 2023-01-21 | 35 |  |  | 2022-12-24 | 2023-01-02 | 7d | -14.25d | 0d |  | کارشناس تست نرم‌افزار [200%]; مدیر محصول; مالک محصول | 224h |  | 19,040,000 | 19,040,000 |  | 1401/10/21 | 1401/11/01 |
| 37 | 4.4.4 | (UAT) آزمون پذیرش کاربر |  | 7d | 2023-01-21 | 2023-01-29 | 36 |  |  | 2023-01-02 | 2023-01-10 | 7d | -14.25d | 0d |  | کارشناس تست نرم‌افزار [200%]; مدیر محصول; مالک محصول | 224h |  | 19,040,000 | 19,040,000 |  | 1401/11/01 | 1401/11/09 |
| 38 | 4.5 | **یکپارچه‌سازی نرم‌افزار و وب‌سایت** |  | 41d | 2023-01-29 | 2023-03-29 |  |  |  | 2023-01-10 | 2023-03-05 | 41.25d | -14.25d | 0d |  |  | 2864h |  | 148,980,000 | 148,980,000 |  | 1401/11/09 | 1402/01/09 |
| 39 | 4.5.1 | پیاده‌سازی هویت بصری یکپارچه و مشخص‌شده |  | 1mo | 2023-01-29 | 2023-03-05 | 37 |  |  | 2023-01-10 | 2023-02-13 | 1mo | -14.25d | 0d |  | مدیر دیجیتال مارکتینگ; مسئول سئو [200%]; مسئول تولید محتوا [200%]; مسئول تبلیغات دیجیتال; UI/UX کارشناس [200%] | 1664h |  | 82,980,000 | 82,980,000 |  | 1401/11/09 | 1401/12/14 |
| 40 | 4.5.2 | اتصال نرم‌افزار و وب‌سایت به پایگاه داده |  | 15d | 2023-03-05 | 2023-03-29 | 21, 26, 24, 39 |  |  | 2023-02-14 | 2023-03-05 | 15d | -14.25d | 0d | finish no earlier than 2023-03-05 | مهندس نرم‌افزار و زیرساخت [200%]; Client/server کارشناس [200%]; Back-end توسعه‌دهنده [200%]; توسعه‌دهنده پایگاه داده [400%] | 1200h |  | 66,000,000 | 66,000,000 |  | 1401/12/14 | 1402/01/09 |
| 41 | 4.6 | **اجرا** |  | 24d | 2023-03-06 | 2023-04-11 |  |  |  | 2023-03-06 | 2023-04-11 | 24d | 0d |  |  |  | 3054h |  | 90,996,000 | 90,996,000 |  | 1401/12/15 | 1402/01/22 |
| 42 | 4.6.1 | برگزاری جلسه با کادر اجرایی پروژه | milestone | 0d | 2023-03-06 | 2023-03-06 |  |  |  | 2023-03-06 | 2023-03-06 | 0d | 0.5d |  | start no earlier than 2023-03-06 |  |  |  |  |  |  | 1401/12/15 | 1401/12/15 |
| 43 | 4.6.2 | اجرای اولیه در بازارهای خرد |  | 10d | 2023-03-06 | 2023-03-19 | 40, 32, 16, 15, 42 |  |  | 2023-03-06 | 2023-03-19 | 10d | -14.25d | 0d | must finish on 2023-03-19 | تیم تدارکات [1000%]; متخصصین پشتیبانی [400%]; اعضای مدیریت پروژه [200%]; مسئول شبکه‌های اجتماعی; مسئول تولید محتوا | 1400h |  | 43,040,000 | 43,040,000 |  | 1401/12/15 | 1401/12/28 |
| 44 | 4.6.3 | اجرای ثانویه در بازار اصلی |  | 13d | 2023-03-25 | 2023-04-11 | 43 |  |  | 2023-03-25 | 2023-04-11 | 13d | 0d |  | must finish on 2023-04-11 | تیم تدارکات [1000%]; متخصصین پشتیبانی [400%]; مسئول شبکه‌های اجتماعی; مسئول تبلیغات دیجیتال | 1654h |  | 47,956,000 | 47,956,000 |  | 1402/01/05 | 1402/01/22 |
| 45 | 5 | پایان فاز راه­اندازی و اجرای پلتفرم | milestone | 0d | 2023-05-06 | 2023-05-06 | 44 |  |  | 2023-05-06 | 2023-05-06 | 0d | 13.5d | 0d | start no earlier than 2023-05-06 |  |  |  |  |  |  | 1402/02/16 | 1402/02/16 |
| 46 | 6 | تهیه گزارشات مالی پروژه | milestone | 0d | 2023-05-06 | 2023-05-06 | 45 |  |  | 2023-05-06 | 2023-05-06 | 0d | 13.5d |  | start no earlier than 2023-03-11 |  |  |  |  |  |  | 1402/02/16 | 1402/02/16 |
| 47 | 7 | **بازاریابی** |  | 35d | 2023-03-25 | 2023-05-11 |  |  |  | 2023-03-25 | 2023-05-11 | 35d | 3.25d |  |  |  | 2440h |  | 128,600,000 | 128,600,000 |  | 1402/01/05 | 1402/02/21 |
| 48 | 7.1 | **تحقیقات بازار** |  | 20d | 2023-03-25 | 2023-04-20 |  |  |  | 2023-03-25 | 2023-04-20 | 20d | 3.25d |  |  |  | 880h |  | 74,720,000 | 74,720,000 |  | 1402/01/05 | 1402/01/31 |
| 49 | 7.1.1 | تحلیل رقبا |  | 10d | 2023-03-25 | 2023-04-08 | 23SS |  |  | 2023-03-25 | 2023-04-08 | 10d | 3.25d | 0d | start no earlier than 2023-03-25 | تحلیلگر داده [200%]; مدیر محصول; مالک محصول; کارشناس تحقیق و توسعه | 400h |  | 36,400,000 | 36,400,000 |  | 1402/01/05 | 1402/01/19 |
| 50 | 7.1.2 | بررسی مشتریان هدف |  | 10d | 2023-04-08 | 2023-04-20 | 49 |  |  | 2023-04-08 | 2023-04-20 | 10d | 3.25d | 0d |  | تحلیلگر داده [200%]; مالک محصول; مدیر محصول; کارشناس تحقیق و توسعه; مسئول شبکه‌های اجتماعی | 480h |  | 38,320,000 | 38,320,000 |  | 1402/01/19 | 1402/01/31 |

| ID | WBS | Task | Duration | Start | Finish | Predecessors | Baseline start | Baseline finish | Baseline duration | Total slack | Free slack | Constraint | Resources | Work | Cost | Baseline cost | Text1 | Text2 |
| --- | --- | --- | --- | --- | --- | --- | --- | --- | --- | --- | --- | --- | --- | --- | --- | --- | --- | --- |
| 51 | 7.2 | **تبلیغات** | 15d | 2023-04-20 | 2023-05-11 |  | 2023-04-20 | 2023-05-11 | 15d | 3.25d |  |  |  | 1560h | 53,880,000 | 53,880,000 | 1402/01/31 | 1402/02/21 |
| 52 | 7.2.1 | تبلیغات مجازی | 15d | 2023-04-20 | 2023-05-11 | 50, 7 | 2023-04-20 | 2023-05-11 | 15d | 3.25d | 0d |  | مدیر دیجیتال مارکتینگ; مسئول شبکه‌های اجتماعی [200%]; مسئول تبلیغات دیجیتال [200%]; مسئول سئو [200%]; مسئول تولید محتوا [200%] | 1080h | 39,480,000 | 39,480,000 | 1402/01/31 | 1402/02/21 |
| 53 | 7.2.2 | تبلیغات محیطی | 15d | 2023-04-20 | 2023-05-11 | 52SS | 2023-04-20 | 2023-05-11 | 15d | 3.25d |  |  | تیم تدارکات [400%] | 480h | 14,400,000 | 14,400,000 | 1402/01/31 | 1402/02/21 |
| 54 | 8 | **خاتمه پروژه** | 5d | 2023-05-15 | 2023-05-22 |  | 2023-05-15 | 2023-05-22 | 5d | 0d |  |  |  | 320h | 21,160,000 | 21,160,000 | 1402/02/25 | 1402/03/01 |
| 55 | 8.1 | جمع‌بندی و جمع‌آوری گزارشات | 5d | 2023-05-15 | 2023-05-22 | 53, 44, 52 | 2023-05-15 | 2023-05-22 | 5d | 0d |  | must finish on 2023-05-22 | اعضای مدیریت پروژه [400%]; مدیر محصول; مالک محصول; مدیر دیجیتال مارکتینگ; مشاور بانکی و حقوقی | 320h | 21,160,000 | 21,160,000 | 1402/02/25 | 1402/03/01 |
